# 230603-HW2_He-Lisa

Schedule from MS Project, 2023-06-09 to 2023-12-06.

## Calendars

- Standard: Mon-Fri 08:00-12:00, 13:00-17:00; Sat-Sun off.

## Resources

| Resource |
| --- |
| PM2 |
| RE6 |
| RE7 |
| RE8 |
| RE102 |
| RE119 |
| SE5 |
| SE6 |
| SE7 |
| SE8 |
| SE9 |
| SE204 |
| SE205 |
| SE501 |
| SE503 |
| PE3 |
| PE4 |
| PE5 |
| PE6 |
| PE7 |
| PE8 |
| PE9 |
| PE10 |
| PE202 |
| PE203 |
| PE205 |
| TE2 |
| TE3 |
| TE5 |
| TE304 |
| TE302 |
| TE2403 |
| TE404 |
| TE405 |
| TE509 |
| DE6 |
| DE7 |
| DE8 |
| DE103 |
| DE104 |
| DE105 |
| DE203 |
| DE204 |
| DE205 |
| SE739 |
| SE934 |
| SE936 |
| PE934 |
| PE935 |
| PE936 |
| TE912 |
| TE913 |
| TE914 |
| TE915 |

## Schedule

| ID | WBS | Task | Duration | Start | Finish | Predecessors | Total slack | Free slack | Resources | Work | Rounded Duration |
| --- | --- | --- | --- | --- | --- | --- | --- | --- | --- | --- | --- |
| 1 | 1 | **Assignment 2-Sharer Project** | 128.84d | 2023-06-09 | 2023-12-06 |  | 0d |  |  | 5778.41h | 129 days |
| 2 | 1.1 | **Project Plan** | 9.53d | 2023-06-09 | 2023-06-22 |  | 0d |  |  | 162.64h | 10 days |
| 3 | 1.1.1 | Write Plan | 3d | 2023-06-09 | 2023-06-13 |  | 0d |  | PM2 | 24h | 3 days |
| 4 | 1.1.2 | **Review Plan** | 2.7d | 2023-06-14 | 2023-06-16 | 3 | 0d |  |  | 108h | 3 days |
| 5 | 1.1.2.1 | Preparation for review | 1.8d | 2023-06-14 | 2023-06-15 | 3 | 0d |  | PE934; SE739; TE912; DE7 [50%]; RE6 | 64.8h | 2 days |
| 6 | 1.1.2.2 | Review Meeting | 0.9d | 2023-06-15 | 2023-06-16 | 5 | 0d |  | PE934; PM2; SE739; TE912; DE7; RE6 | 43.2h | 1 days |
| 7 | 1.1.3 | Rework | 3.83d | 2023-06-16 | 2023-06-22 | 6 | 0d |  | PM2 | 30.64h | 4 days |
| 8 | 1.2 | **Requirements** | 15.15d | 2023-06-22 | 2023-07-13 | 7 | 0d |  |  | 478.48h | 16 days |
| 9 | 1.2.1 | Write requirements | 2.99d | 2023-06-22 | 2023-06-27 | 7 | 0d |  | RE7; RE8; RE102 | 71.76h | 3 days |
| 10 | 1.2.2 | **Review Requirements** | 10.77d | 2023-06-27 | 2023-07-12 | 9 | 0d |  |  | 373.36h | 11 days |
| 11 | 1.2.2.1 | Preparation for review | 7.18d | 2023-06-27 | 2023-07-06 | 9 | 0d |  | DE205; DE204; PE936; RE119 | 229.76h | 8 days |
| 12 | 1.2.2.2 | Review Meeting | 3.59d | 2023-07-06 | 2023-07-12 | 11 | 0d |  | DE204; DE205; PE936; RE119; RE7 | 143.6h | 4 days |
| 13 | 1.2.3 | Rework | 1.39d | 2023-07-12 | 2023-07-13 | 12 | 0d |  | RE7; RE8; RE102 | 33.36h | 2 days |
| 14 | 1.3 | **Lab and Environment Setup** | 5.91d | 2023-07-13 | 2023-07-21 | 8 | 7.78d |  |  | 141.84h | 6 days |
| 15 | 1.3.1 | **Hardware** | 5.56d | 2023-07-13 | 2023-07-21 | 8 | 7.78d | 0d |  | 133.44h | 6 days |
| 16 | 1.3.1.1 | Install Server | 4d | 2023-07-13 | 2023-07-19 | 8 | 7.78d | 0d | SE739; SE934; SE936 | 96h | 4 days |
| 17 | 1.3.1.2 | Install Clients | 1.56d | 2023-07-19 | 2023-07-21 | 16 | 7.78d |  | SE739; SE934; SE936 | 37.44h | 2 days |
| 18 | 1.3.2 | **Software** | 0.35d | 2023-07-21 | 2023-07-21 | 15 | 7.78d |  |  | 8.4h | 1 days |
| 19 | 1.3.2.1 | Install Development Tools | 0.1d | 2023-07-21 | 2023-07-21 | 15 | 7.78d | 0d | SE739; SE934; SE936 | 2.4h | 1 days |
| 20 | 1.3.2.2 | Install Testing Tools | 0.25d | 2023-07-21 | 2023-07-21 | 19 | 7.78d |  | SE739; SE934; SE936 | 6h | 1 days |
| 21 | 1.4 | **Analysis/Design Document** | 9.41d | 2023-07-13 | 2023-07-27 | 8 | 0d |  |  | 320h | 10 days |
| 22 | 1.4.1 | Write DD | 1.18d | 2023-07-13 | 2023-07-14 | 8 | 0d |  | SE6; SE7; SE5; SE8 | 37.76h | 2 days |
| 23 | 1.4.2 | **Review DD** | 7.09d | 2023-07-14 | 2023-07-25 | 22 | 0d |  |  | 245.76h | 8 days |
| 24 | 1.4.2.1 | Preparation for DD | 4.73d | 2023-07-14 | 2023-07-21 | 22 | 0d |  | SE9; RE119; TE912; PE205 | 151.36h | 5 days |
| 25 | 1.4.2.2 | Review Meeting | 2.36d | 2023-07-21 | 2023-07-25 | 24 | 0d |  | SE8; SE9; RE119; TE912; PE205 | 94.4h | 3 days |
| 26 | 1.4.3 | Rework | 1.14d | 2023-07-25 | 2023-07-27 | 25 | 0d |  | SE6; SE7; SE8; SE9 | 36.48h | 2 days |

| ID | WBS | Task | Duration | Start | Finish | Predecessors | Total slack | Resources | Work | Rounded Duration |
| --- | --- | --- | --- | --- | --- | --- | --- | --- | --- | --- |
| 27 | 1.5 | **Data Model** | 4.28d | 2023-07-27 | 2023-08-02 | 21 | 0d |  | 188.56h | 5 days |
| 28 | 1.5.1 | Create Data Model | 0.97d | 2023-07-27 | 2023-07-28 | 21 | 0d | SE5; SE6; SE7; SE8; SE9; SE204; SE205; SE501 | 62.08h | 1 days |
| 29 | 1.5.2 | **Review Data Model** | 2.91d | 2023-07-28 | 2023-08-01 | 28 | 0d |  | 100.88h | 3 days |
| 30 | 1.5.2.1 | Preparation for DM | 1.94d | 2023-07-28 | 2023-07-31 | 28 | 0d | SE503; DE205; RE102; SE739 | 62.08h | 2 days |
| 31 | 1.5.2.2 | Review Meeting | 0.97d | 2023-08-01 | 2023-08-01 | 30 | 0d | SE503; DE205; RE102; SE739; SE501 | 38.8h | 1 days |
| 32 | 1.5.3 | Rework | 0.4d | 2023-08-01 | 2023-08-02 | 31 | 0d | SE5; SE6; SE7; SE8; SE9; SE204; SE205; SE501 | 25.6h | 1 days |
| 33 | 1.6 | **Coding and unit test** | 80.3d | 2023-08-02 | 2023-11-22 | 14 | 0d |  | 4071.45h | 81 days |
| 34 | 1.6.1 | Write Code | 11.33d | 2023-08-02 | 2023-08-18 | 27 | 0d | PE5; PE6; PE7; PE8; PE9; PE10; PE202; PE203; PE205; PE934; PE935; PE936 | 625.13h | 12 days |
| 35 | 1.6.2 | **Unit Testing** | 14.6d | 2023-08-18 | 2023-09-07 | 34 | 0d |  | 993.92h | 15 days |
| 36 | 1.6.2.1 | Prepare/Execute Test Cases | 1.65d | 2023-08-18 | 2023-08-21 | 34 | 0d | PE202; PE203; PE205; PE934; PE935; PE936; PE8; PE9; PE10; PE6; PE7 | 84.48h | 2 days |
| 37 | 1.6.2.2 | Fix Found Defects | 7.24d | 2023-08-21 | 2023-08-31 | 36 | 0d | PE3; PE936; PE4; PE5; PE6; PE7; PE8; PE9; PE10; PE202; PE203; PE205; PE934; PE935 | 454.72h | 8 days |
| 38 | 1.6.2.3 | Test Fixed Defects | 5.71d | 2023-08-31 | 2023-09-07 | 37 | 0d | PE3; PE936; PE4; PE5; PE6; PE7; PE8; PE9; PE10; PE202; PE203; PE205; PE934; PE935 | 454.72h | 6 days |
| 39 | 1.6.3 | **Code Inspection** | 10.89d | 2023-09-07 | 2023-09-22 | 38 | 0d |  | 472.96h | 11 days |
| 40 | 1.6.3.1 | Preparation for Code Inspection | 5.89d | 2023-09-07 | 2023-09-15 | 38 | 0d | PE3; SE936; TE914; TE915 | 188.48h | 6 days |
| 41 | 1.6.3.2 | Code Inspection Meeting | 3.68d | 2023-09-15 | 2023-09-21 | 40 | 0d | PE3; PE4; SE936; TE914; TE915 | 147.2h | 4 days |
| 42 | 1.6.3.3 | Rework | 1.32d | 2023-09-21 | 2023-09-22 | 41 | 0d | PE4; PE5; PE6; PE7; PE8; PE9; PE10; PE202; PE203; PE205; PE934; PE935; PE936 | 137.28h | 2 days |
| 43 | 1.6.4 | **Testing** | 42.95d | 2023-09-22 | 2023-11-22 | 42, 14 | 0d |  | 1979.44h | 43 days |
| 44 | 1.6.4.1 | Write test plan (TP) | 9.36d | 2023-09-22 | 2023-10-10 | 42, 14, 8 | 0d | TE912; TE913; TE914; TE915; TE2403; TE404; TE405; TE509; TE3; TE5; TE302; TE304 | 462.72h | 10 days |
| 45 | 1.6.4.2 | **Review TP** | 24.32d | 2023-10-10 | 2023-11-14 | 44 | 0d |  | 841.76h | 25 days |
| 46 | 1.6.4.2.1 | Preparation for TP | 18.06d | 2023-10-10 | 2023-11-03 | 44 | 0d | TE2; PE936; SE934; SE936 | 577.92h | 19 days |
| 47 | 1.6.4.2.2 | Review TP Meeting | 6.02d | 2023-11-03 | 2023-11-13 | 46 | 0d | SE934; SE936; TE2; PE936; TE3 | 240.8h | 7 days |
| 48 | 1.6.4.2.3 | Rework | 0.24d | 2023-11-13 | 2023-11-14 | 47 | 0d | TE3; TE5; TE302; TE304; TE404; TE405; TE509; TE912; TE913; TE914; TE915; TE2403 | 23.04h | 1 days |
| 49 | 1.6.4.3 | Execute TP (test cases) | 4.77d | 2023-11-14 | 2023-11-20 | 42, 48 | 0d | TE3; TE5; TE302; TE304; TE404; TE405; TE509; TE912; TE913; TE914; TE915; TE2403; TE2 | 496.08h | 5 days |
| 50 | 1.6.4.4 | Fix Found Defects | 1.72d | 2023-11-20 | 2023-11-22 | 49 | 0d | TE3; TE5; TE302; TE304; TE404; TE405; TE509; TE912; TE913; TE914; TE915; TE2403; TE2 | 178.88h | 2 days |

| ID | WBS | Task | Duration | Start | Finish | Predecessors | Total slack | Resources | Work | Rounded Duration |
| --- | --- | --- | --- | --- | --- | --- | --- | --- | --- | --- |
| 51 | 1.7 | **Documentation** | 10.92d | 2023-11-21 | 2023-12-06 | 8 | 0d |  | 415.44h | 11 days |
| 52 | 1.7.1 | User Documentation | 0.75d | 2023-11-21 | 2023-11-22 | 8, 50FF | 0d | DE7; DE8; DE103; DE104; DE105; DE203; DE204; DE205 | 48h | 1 days |
| 53 | 1.7.2 | **Review UD** | 10.17d | 2023-11-22 | 2023-12-06 | 52 | 0d |  | 367.44h | 11 days |
| 54 | 1.7.2.1 | Preparation for UD Review | 6.03d | 2023-11-22 | 2023-11-30 | 52 | 0d | DE6; SE739; SE934; SE936 | 192.96h | 7 days |
| 55 | 1.7.2.2 | Review UD Meeting | 3.77d | 2023-11-30 | 2023-12-06 | 54 | 0d | DE6; DE7; SE739; SE934; SE936 | 150.8h | 4 days |
| 56 | 1.7.2.3 | Rework | 0.37d | 2023-12-06 | 2023-12-06 | 55 | 0d | DE7; DE8; DE103; DE104; DE105; DE203; DE204; DE205 | 23.68h | 1 days |
